# Be Local_TEAM 5_MPP FINAL

Schedule from MS Project, 2025-03-27 to 2026-03-25, costs in ₫, A marks actual dates.

## Calendars

- Standard: Mon-Fri 08:00-12:00, 13:00-17:00; Sat-Sun off.

## Resources

| Resource | Rate | Cost per use |
| --- | --- | --- |
| Felix Phan | 100000 |  |
| Viet Anh | 70000 |  |
| Tri Tam | 70000 |  |
| Minh Hanh | 70000 |  |
| Van Hieu | 70000 |  |
| Phuong Thuy | 100000 |  |
| Lam Giang | 70000 |  |
| Lo Van Sung | 40000 |  |
| Giang Dac Thai | 40000 |  |
| Thao Phuong Anh | 30000 |  |
| Then Ngoc Tam | 30000 |  |
| Ksor Y’Bo Khap | 30000 |  |
| Recruitment and training |  | 40000000 |
| Salary |  | 1346000000 |
| Local authority cooperation |  | 30000000 |
| Utilities and Equipments |  | 130000000 |
| Household partner incentives |  | 50000000 |
| Site survey and study |  | 25000000 |
| Pilot tour testing |  | 30000000 |
| Tour execution cost |  | 199200000 |
| Full-scale marketing campaign expense |  | 430000000 |
| Welcome gift packages |  | 48000000 |
| Loyalty & referral program |  | 70000000 |
| Tax payments |  | 165200000 |
| Rent |  | 130000000 |
| Performance review & feedback |  | 130000000 |
| Income Statement |  |  |

## Schedule

| ID | WBS | Task | Duration | Start | Finish | Predecessors | Complete | Remaining | Constraint | Resources | Work | Actual work | Cost | Actual cost |
| --- | --- | --- | --- | --- | --- | --- | --- | --- | --- | --- | --- | --- | --- | --- |
| 1 | 1 | **Planning** | 47d | 2025-03-27 08:00 A | 2025-05-20 17:00 |  | 55% | 21.38d |  |  | 222h | 121h | 17,310,000 | 9,130,000 |
| 2 | 1.1 | **Develop Project Charter** | 7.62d | 2025-03-27 08:00 A | 2025-04-04 14:00 |  | 100% | 0d |  |  | 29h | 29h | 2,300,000 | 2,300,000 |
| 3 | 1.1.1 | Define Project Description | 1h | 2025-03-27 08:00 A | 2025-03-27 09:00 A |  | 100% |  |  | Lam Giang | 1h | 1h | 70,000 | 70,000 |
| 4 | 1.1.2 | Define Project Goals & Deliverables | 4h | 2025-03-27 09:00 A | 2025-03-27 14:00 A | 3 | 100% |  |  | Lam Giang | 4h | 4h | 280,000 | 280,000 |
| 5 | 1.1.3 | Finalize Business Case | 8h | 2025-03-29 14:00 A | 2025-03-31 14:00 A | 4 | 100% |  | start no earlier than 2025-03-29 14:00 | Felix Phan | 8h | 8h | 800,000 | 800,000 |
| 6 | 1.1.4 | List Core Team & Assign Roles | 1h | 2025-03-31 14:00 A | 2025-03-31 15:00 A | 5 | 100% |  | finish no earlier than 2025-03-03 17:00 | Felix Phan | 1h | 1h | 100,000 | 100,000 |
| 7 | 1.1.5 | Identify Stakeholders | 4h | 2025-03-31 15:00 A | 2025-04-01 10:00 A | 6 | 100% |  | finish no earlier than 2025-03-03 17:00 | Tri Tam | 4h | 4h | 280,000 | 280,000 |
| 8 | 1.1.6 | Outline Key Risks & Mitigation Strategies | 7h | 2025-04-03 10:00 A | 2025-04-04 09:00 A | 7 | 100% |  | start no earlier than 2025-04-03 10:00 | Tri Tam | 7h | 7h | 490,000 | 490,000 |
| 9 | 1.1.7 | Define Key Milestones | 4h | 2025-04-04 09:00 A | 2025-04-04 14:00 A | 8 | 100% |  | start no earlier than 2025-03-08 08:00 | Minh Hanh | 4h | 4h | 280,000 | 280,000 |
| 10 | 1.2 | **Define Project Scope Statement** | 3.88d | 2025-04-05 13:00 A | 2025-04-10 16:00 A |  | 100% |  |  |  | 27h | 27h | 2,280,000 | 2,280,000 |
| 11 | 1.2.1 | Summarize Project Justification | 4h | 2025-04-05 13:00 A | 2025-04-05 17:00 A |  | 100% |  | start no earlier than 2025-04-05 13:00 | Phuong Thuy | 4h | 4h | 400,000 | 400,000 |
| 12 | 1.2.2 | Indentify Scope Description | 6h | 2025-04-07 08:00 A | 2025-04-07 15:00 A | 11 | 100% |  | finish no earlier than 2025-03-10 17:00 | Lam Giang | 6h | 6h | 420,000 | 420,000 |
| 13 | 1.2.3 | Set Business Objective | 4h | 2025-04-07 15:00 A | 2025-04-08 10:00 A | 12 | 100% |  | finish no earlier than 2025-03-11 17:00 | Felix Phan | 4h | 4h | 400,000 | 400,000 |
| 14 | 1.2.4 | Define Project Deliverables | 5h | 2025-04-08 10:00 A | 2025-04-08 16:00 A | 13 | 100% |  | start no earlier than 2025-03-11 08:00 | Felix Phan | 5h | 5h | 500,000 | 500,000 |
| 15 | 1.2.5 | Outline Acceptance Criteria | 3h | 2025-04-08 16:00 A | 2025-04-09 10:00 A | 14 | 100% |  | start no earlier than 2025-03-13 08:00 | Van Hieu | 3h | 3h | 210,000 | 210,000 |
| 16 | 1.2.6 | Outline Project Constraints | 3h | 2025-04-09 10:00 A | 2025-04-09 14:00 A | 15 | 100% |  | start no earlier than 2025-03-13 08:00 | Van Hieu | 3h | 3h | 210,000 | 210,000 |
| 17 | 1.2.7 | List Key Assumptions | 2h | 2025-04-10 14:00 A | 2025-04-10 16:00 A | 16 | 100% |  | start no earlier than 2025-04-10 14:00 | Van Hieu | 2h | 2h | 140,000 | 140,000 |
| 18 | 1.3 | **Design Tour Packages** | 3d | 2025-04-04 14:00 A | 2025-04-09 14:00 A |  | 100% |  |  |  | 32h | 32h | 2,240,000 | 2,240,000 |
| 19 | 1.3.1 | Research Customer Needs & Travel Trends | 8h | 2025-04-04 14:00 A | 2025-04-05 14:00 A | 2 | 100% |  |  | Viet Anh | 8h | 8h | 560,000 | 560,000 |
| 20 | 1.3.2 | Map Potential Local Experiences & Resources | 8h | 2025-04-05 14:00 A | 2025-04-07 14:00 A | 19 | 100% |  |  | Minh Hanh | 8h | 8h | 560,000 | 560,000 |
| 21 | 1.3.3 | Develop Tour Concepts & Prototypes | 16h | 2025-04-07 14:00 A | 2025-04-09 14:00 A | 20 | 100% |  |  | Viet Anh | 16h | 16h | 1,120,000 | 1,120,000 |
| 22 | 1.4 | **Create Stakeholder Register** | 1d | 2025-04-04 14:00 A | 2025-04-07 14:00 A |  | 100% |  |  |  | 8h | 8h | 560,000 | 560,000 |
| 23 | 1.4.1 | Indentify Stakeholders roles & interests | 4h | 2025-04-04 14:00 A | 2025-04-05 09:00 A | 2 | 100% |  | start no earlier than 2025-03-08 08:00 | Tri Tam | 4h | 4h | 280,000 | 280,000 |
| 24 | 1.4.2 | Create RACI Matrix | 4h | 2025-04-07 09:00 A | 2025-04-07 14:00 A | 23 | 100% |  | start no earlier than 2025-04-07 09:00 | Tri Tam | 4h | 4h | 280,000 | 280,000 |

| ID | WBS | Task | Duration | Start | Finish | Predecessors | Complete | Total slack | Free slack | Constraint | Resources | Work | Actual work | Cost | Actual cost |
| --- | --- | --- | --- | --- | --- | --- | --- | --- | --- | --- | --- | --- | --- | --- | --- |
| 25 | 1.5 | **Design Communication Plan** | 2d | 2025-04-12 13:00 A | 2025-04-15 17:00 A |  | 100% |  |  |  |  | 8h | 8h | 560,000 | 560,000 |
| 26 | 1.5.1 | Indentify Information Needs | 4h | 2025-04-12 13:00 A | 2025-04-12 17:00 A | 23 | 100% |  |  | start no earlier than 2025-04-12 13:00 | Van Hieu | 4h | 4h | 280,000 | 280,000 |
| 27 | 1.5.2 | Define Communication Methods & Frequency | 4h | 2025-04-15 13:00 A | 2025-04-15 17:00 A | 26 | 100% |  |  | start no earlier than 2025-04-15 13:00 | Van Hieu | 4h | 4h | 280,000 | 280,000 |
| 28 | 1.6 | **Develop Risk Management Plan** | 5d | 2025-04-30 08:00 | 2025-05-06 17:00 |  |  | 93d | 0d |  |  | 15h |  | 1,050,000 |  |
| 29 | 1.6.1 | Define Risk Sources & Reasons | 4h | 2025-04-30 08:00 | 2025-04-30 12:00 |  |  | 115.75d | 0d | start no earlier than 2025-04-30 08:00 | Van Hieu | 4h |  | 280,000 |  |
| 30 | 1.6.2 | Indentify Risk Level | 1h | 2025-05-03 11:00 | 2025-05-03 12:00 | 29 |  | 112.88d | 0d | start no earlier than 2025-05-03 11:00 | Van Hieu | 1h |  | 70,000 |  |
| 31 | 1.6.3 | Create Heat Map | 2h | 2025-05-05 15:00 | 2025-05-05 17:00 | 30 |  | 111.62d | 0d | start no earlier than 2025-05-05 15:00 | Viet Anh | 2h |  | 140,000 |  |
| 32 | 1.6.4 | Create Mitigation Plan & Contigency Plan | 8h | 2025-05-06 08:00 | 2025-05-06 17:00 | 31 |  | 111.62d | 0d | start no earlier than 2025-05-06 08:00 | Viet Anh | 8h |  | 560,000 |  |
| 33 | 1.7 | **Develop Marketing Plan** | 12d | 2025-05-03 08:00 | 2025-05-20 17:00 |  |  | 83d | 0d |  |  | 28h |  | 1,960,000 |  |
| 34 | 1.7.1 | Analyse Tourism Market | 8h | 2025-05-03 08:00 | 2025-05-03 17:00 |  |  | 111.12d | 0d | start no earlier than 2025-05-03 08:00 | Minh Hanh | 8h |  | 560,000 |  |
| 35 | 1.7.2 | Analyze Company SWOT | 5h | 2025-05-07 16:00 | 2025-05-08 12:00 | 34 |  | 108.25d | 0d | start no earlier than 2025-05-07 16:00 | Minh Hanh | 5h |  | 350,000 |  |
| 36 | 1.7.3 | Analyse 7Ps Marketing | 5h | 2025-05-08 13:00 | 2025-05-09 09:00 | 35 |  | 108.25d | 0d | start no earlier than 2025-05-08 13:00 | Minh Hanh | 5h |  | 350,000 |  |
| 37 | 1.7.4 | Define Goals, Objectives & Metrics | 2h | 2025-05-14 10:00 | 2025-05-14 12:00 | 36 |  | 104.12d | 0d | start no earlier than 2025-05-14 10:00 | Minh Hanh | 2h |  | 140,000 |  |
| 38 | 1.7.5 | Develop Marketing Strategy | 8h | 2025-05-20 08:00 | 2025-05-20 17:00 | 37 |  | 99.62d | 0d | start no earlier than 2025-05-20 08:00 | Minh Hanh | 8h |  | 560,000 |  |
| 39 | 1.8 | **Formulate Sales Plan** | 5d | 2025-05-03 11:00 | 2025-05-10 17:00 |  |  | 90d | 0d |  |  | 21h |  | 1,470,000 |  |
| 40 | 1.8.1 | Create Pricing Plan | 5h | 2025-05-03 11:00 | 2025-05-03 17:00 |  |  | 111.62d | 0d | start no earlier than 2025-05-03 11:00 | Tri Tam | 5h |  | 350,000 |  |
| 41 | 1.8.2 | Develop Sale Process | 8h | 2025-05-07 08:00 | 2025-05-07 17:00 | 40 |  | 109.62d | 0d | start no earlier than 2025-05-07 08:00 | Van Hieu | 8h |  | 560,000 |  |
| 42 | 1.8.3 | Build CRM System | 8h | 2025-05-10 08:00 | 2025-05-10 17:00 | 41 |  | 107.62d | 0d | start no earlier than 2025-05-10 08:00 | Van Hieu | 8h |  | 560,000 |  |
| 43 | 1.9 | **Design Human Resource Plan** | 11.12d | 2025-04-10 08:00 A | 2025-04-25 09:00 A |  | 100% |  |  |  |  | 17h | 17h | 1,190,000 | 1,190,000 |
| 44 | 1.9.1 | Allocate Human Resource | 4h | 2025-04-10 08:00 A | 2025-04-10 12:00 A |  | 100% |  |  | start no earlier than 2025-04-10 08:00 | Lam Giang | 4h | 4h | 280,000 | 280,000 |
| 45 | 1.9.2 | Develop Recruitment Plan | 8h | 2025-04-17 13:00 A | 2025-04-18 12:00 A | 44 | 100% |  |  | start no earlier than 2025-04-17 13:00 | Lam Giang | 8h | 8h | 560,000 | 560,000 |
| 46 | 1.9.3 | Build Training Process | 5h | 2025-04-24 13:00 A | 2025-04-25 09:00 A | 45 | 100% |  |  | start no earlier than 2025-04-24 13:00 | Lam Giang | 5h | 5h | 350,000 | 350,000 |
| 47 | 1.10 | **Develop Budget & Cost Management Plan** | 22.12d | 2025-03-27 08:00 | 2025-04-28 09:00 |  |  | 99.88d | 0d |  |  | 24h |  | 2,400,000 |  |
| 48 | 1.10.1 | Estimate Project Budget | 8h | 2025-04-25 09:00 | 2025-04-26 09:00 |  |  | 119.5d | 0d | start no earlier than 2025-04-25 09:00 | Phuong Thuy | 8h |  | 800,000 |  |
| 49 | 1.10.2 | Allocate Budget Based on Phases | 5h | 2025-04-26 09:00 | 2025-04-26 15:00 | 48 |  | 119.5d | 0d | start no earlier than 2025-04-05 08:00 | Phuong Thuy | 5h |  | 500,000 |  |
| 50 | 1.10.3 | Income Statement | 8h | 2025-03-27 08:00 | 2025-03-27 17:00 |  |  | 145.62d | 0d |  | Phuong Thuy | 8h |  | 800,000 |  |
| 51 | 1.10.4 | Allocate Budget Based on Categories | 3h | 2025-04-26 15:00 | 2025-04-28 09:00 | 49 |  | 119.5d | 0d | start no earlier than 2025-04-12 08:00 | Phuong Thuy | 3h |  | 300,000 |  |

| ID | WBS | Task | Duration | Start | Finish | Predecessors | Total slack | Free slack | Constraint | Resources | Work | Cost |
| --- | --- | --- | --- | --- | --- | --- | --- | --- | --- | --- | --- | --- |
| 52 | 1.11 | **Build Project Schedule** | 1.12d | 2025-04-10 16:00 | 2025-04-12 12:00 |  | 110d | 0d |  |  | 13h | 1,300,000 |
| 53 | 1.11.1 | Create Work Breakdown Structure | 8h | 2025-04-10 16:00 | 2025-04-11 16:00 | 10 | 132.12d | 0d |  | Felix Phan | 8h | 800,000 |
| 54 | 1.11.2 | Create Project Timeline on MPP | 5h | 2025-04-11 16:00 | 2025-04-12 12:00 | 53 | 132.12d | 0d |  | Felix Phan | 5h | 500,000 |
| 55 | 2 | **Execution** | 38.12d | 2025-05-27 08:00 | 2025-07-18 09:00 | 1 | 45.88d | 0d |  |  | 108h | 8,610,000 |
| 56 | 2.1 | **Prepare Kick-off Meeting** | 1d | 2025-05-27 08:00 | 2025-05-27 17:00 | 1 | 83d | 0d |  |  | 8h | 560,000 |
| 57 | 2.1.1 | Summarize Project Background | 1h | 2025-05-27 08:00 | 2025-05-27 09:00 |  | 99.12d | 0d | start no earlier than 2025-05-27 08:00 | Lam Giang | 1h | 70,000 |
| 58 | 2.1.2 | Analyze Stakeholders | 1h | 2025-05-27 09:00 | 2025-05-27 10:00 | 57 | 99.12d | 0d | start no earlier than 2025-05-01 08:00 | Lam Giang | 1h | 70,000 |
| 59 | 2.1.3 | Define Target Customers | 1h | 2025-05-27 10:00 | 2025-05-27 11:00 | 58 | 99.12d | 0d | start no earlier than 2025-05-01 08:00 | Lam Giang | 1h | 70,000 |
| 60 | 2.1.4 | Set Goals & Objectives | 1h | 2025-05-27 11:00 | 2025-05-27 12:00 | 59 | 99.12d | 0d | start no earlier than 2025-05-01 08:00 | Lam Giang | 1h | 70,000 |
| 61 | 2.1.5 | Design Marketing Funnel | 1h | 2025-05-27 13:00 | 2025-05-27 14:00 | 60 | 99.12d | 0d | start no earlier than 2025-05-01 08:00 | Lam Giang | 1h | 70,000 |
| 62 | 2.1.6 | Develop Team Structure | 1h | 2025-05-27 14:00 | 2025-05-27 15:00 | 61 | 99.12d | 0d | start no earlier than 2025-05-01 08:00 | Lam Giang | 1h | 70,000 |
| 63 | 2.1.7 | Create Project Timeline | 1h | 2025-05-27 15:00 | 2025-05-27 16:00 | 62 | 99.12d | 0d | start no earlier than 2025-05-01 08:00 | Lam Giang | 1h | 70,000 |
| 64 | 2.1.8 | Assess Project Risks | 1h | 2025-05-27 16:00 | 2025-05-27 17:00 | 63 | 99.12d | 0d | start no earlier than 2025-05-01 08:00 | Lam Giang | 1h | 70,000 |
| 65 | 2.2 | **Finalize 4 Initial Tour Packages** | 9d | 2025-05-27 08:00 | 2025-06-07 15:00 |  | 71.38d | 0d |  |  | 14h | 980,000 |
| 66 | 2.2.1 | Develop Roll-Out Timeline for Each Tour | 4h | 2025-05-27 08:00 | 2025-05-27 12:00 |  | 94.62d | 0d | start no earlier than 2025-05-27 08:00 | Minh Hanh | 4h | 280,000 |
| 67 | 2.2.2 | Confirm Local Activity Partners | 5h | 2025-05-29 13:00 | 2025-05-30 09:00 | 66 | 92.62d | 0d | start no earlier than 2025-05-29 13:00 | Tri Tam | 5h | 350,000 |
| 68 | 2.2.3 | Conduct Costing & Price Finalization | 5h | 2025-06-07 09:00 | 2025-06-07 15:00 | 67 | 85.62d | 0d | start no earlier than 2025-06-07 09:00 | Tri Tam | 5h | 350,000 |
| 69 | 2.3 | **Recruit & Train Tour Operators** | 11.75d | 2025-06-11 15:00 | 2025-06-27 12:00 |  | 60.5d | 0d |  |  | 30h | 2,100,000 |
| 70 | 2.3.1 | Identify roles and number of tour operators | 4h | 2025-06-11 15:00 | 2025-06-12 10:00 | 68 | 82.62d | 0d | start no earlier than 2025-06-11 15:00 | Viet Anh | 4h | 280,000 |
| 71 | 2.3.2 | Source candidates | 10h | 2025-06-12 10:00 | 2025-06-13 12:00 | 70 | 82.62d | 0d | start no earlier than 2025-05-15 08:00 | Viet Anh | 10h | 700,000 |
| 72 | 2.3.3 | Organize training sessions | 16h | 2025-06-25 13:00 | 2025-06-27 12:00 | 71 | 72.62d | 0d | start no earlier than 2025-06-25 13:00 | Viet Anh | 16h | 1,120,000 |
| 73 | 2.4 | **Build Operational Resources** | 14d | 2025-05-27 08:00 | 2025-06-14 14:00 |  | 69.5d | 0d |  |  | 26h | 2,600,000 |
| 74 | 2.4.1 | Create tour checklists & SOPs | 8h | 2025-05-27 08:00 | 2025-05-27 17:00 |  | 97.5d | 0d | start no earlier than 2025-05-27 08:00 | Felix Phan | 8h | 800,000 |
| 75 | 2.4.2 | Prepare feedback and review forms | 5h | 2025-06-07 08:00 | 2025-06-07 14:00 | 74 | 88.88d | 0d | start no earlier than 2025-06-07 08:00 | Felix Phan | 5h | 500,000 |
| 76 | 2.4.3 | Develop incident management protocols | 8h | 2025-06-10 08:00 | 2025-06-10 17:00 | 74 | 86.5d | 0d | start no earlier than 2025-06-10 08:00 | Felix Phan | 8h | 800,000 |
| 77 | 2.4.4 | Organize storage & material tracking systems | 5h | 2025-06-14 08:00 | 2025-06-14 14:00 | 74 | 82.88d | 0d | start no earlier than 2025-06-14 08:00 | Felix Phan | 5h | 500,000 |

| ID | WBS | Task | Duration | Start | Finish | Predecessors | Total slack | Free slack | Constraint | Resources | Work | Cost |
| --- | --- | --- | --- | --- | --- | --- | --- | --- | --- | --- | --- | --- |
| 78 | 2.5 | **Prepare Project Legal** | 4.62d | 2025-06-19 13:00 | 2025-06-26 09:00 | 73 | 61.88d | 0d |  |  | 13h | 1,180,000 |
| 79 | 2.5.1 | Register business & tax information | 4h | 2025-06-19 13:00 | 2025-06-19 17:00 |  | 79.12d | 0d | start no earlier than 2025-06-19 13:00 | Phuong Thuy | 4h | 400,000 |
| 80 | 2.5.2 | Draft contracts for partners | 5h | 2025-06-21 14:00 | 2025-06-23 10:00 |  | 76.88d | 0d | start no earlier than 2025-06-21 14:00 | Phuong Thuy | 5h | 500,000 |
| 81 | 2.5.3 | Review insurance, liability, and safety needs | 4h | 2025-06-25 14:00 | 2025-06-26 09:00 |  | 74d | 0d | start no earlier than 2025-06-25 14:00 | Lam Giang | 4h | 280,000 |
| 82 | 2.6 | **Set Up Booking & Customer Support System** | 8.12d | 2025-07-08 08:00 | 2025-07-18 09:00 |  | 45.88d | 0d |  |  | 17h | 1,190,000 |
| 83 | 2.6.1 | Choose booking platform | 4h | 2025-07-08 08:00 | 2025-07-08 12:00 | 68 | 62d | 0d | start no earlier than 2025-07-08 08:00 | Van Hieu | 4h | 280,000 |
| 84 | 2.6.2 | Design booking confirmation workflow | 5h | 2025-07-10 13:00 | 2025-07-11 09:00 | 83 | 60d | 0d | start no earlier than 2025-07-10 13:00 | Van Hieu | 5h | 350,000 |
| 85 | 2.6.3 | Assign booking & support responsibilities | 8h | 2025-07-17 09:00 | 2025-07-18 09:00 | 84 | 55d | 0d | start no earlier than 2025-07-17 09:00 | Van Hieu | 8h | 560,000 |
| 86 | 3 | **Soft-launch** | 10d | 2025-09-20 09:00 | 2025-10-04 14:00 | 55 | 0d |  |  |  | 156h | 12,030,000 |
| 87 | 3.1 | **Test Operational System** | 5d | 2025-09-20 09:00 | 2025-09-27 11:00 |  | 126.25d | 0d |  |  | 50h | 3,500,000 |
| 88 | 3.1.1 | Test the tour booking and payment process. | 24h | 2025-09-20 09:00 | 2025-09-24 09:00 |  | 152.12d | 0d | start no earlier than 2025-09-20 09:00 | Viet Anh | 24h | 1,680,000 |
| 89 | 3.1.2 | Train staff on internal procedures. | 16h | 2025-09-24 09:00 | 2025-09-26 09:00 | 88 | 152.12d | 0d | start no earlier than 2025-06-26 08:00 | Viet Anh | 16h | 1,120,000 |
| 90 | 3.1.3 | Create troubleshooting scenarios related to operations. | 5h | 2025-09-26 09:00 | 2025-09-26 15:00 | 89 | 152.12d | 0d | start no earlier than 2025-06-26 08:00 | Viet Anh | 5h | 350,000 |
| 91 | 3.1.4 | Check readiness of partners. | 5h | 2025-09-26 15:00 | 2025-09-27 11:00 | 90 | 152.12d | 0d | start no earlier than 2025-06-26 08:00 | Viet Anh | 5h | 350,000 |
| 92 | 3.2 | **Pilot Testing** | 5.12d | 2025-09-20 09:00 | 2025-09-29 09:00 |  | 0d |  |  |  | 26h | 1,820,000 |
| 93 | 3.2.1 | Select and invite pilot test customers. | 6h | 2025-09-27 11:00 | 2025-09-29 09:00 | 91 | 152.12d | 0d | start no earlier than 2025-09-20 11:00 | Tri Tam | 6h | 420,000 |
| 94 | 3.2.2 | Prepare a detailed itinerary for the pilot test trip. | 8h | 2025-09-20 09:00 | 2025-09-22 09:00 |  | 0d |  | start no earlier than 2025-09-20 09:00 | Van Hieu | 8h | 560,000 |
| 95 | 3.2.3 | Monitor and record each operational step during the pilot test. | 8h | 2025-09-22 09:00 | 2025-09-23 09:00 | 94 | 0d |  | start no earlier than 2025-09-22 09:00 | Van Hieu | 8h | 560,000 |
| 96 | 3.2.4 | Identify areas for improvement. | 4h | 2025-09-23 09:00 | 2025-09-23 14:00 | 95 | 0d |  |  | Van Hieu | 4h | 280,000 |
| 97 | 3.3 | **Collect User Feedback** | 2.38d | 2025-09-23 14:00 | 2025-09-25 17:00 |  | 0d |  |  |  | 19h | 1,330,000 |
| 98 | 3.3.1 | Distribute feedback surveys post-trip. | 5h | 2025-09-23 14:00 | 2025-09-24 10:00 | 96 | 0d |  | finish no earlier than 2025-05-17 17:00 | Lam Giang | 5h | 350,000 |
| 99 | 3.3.2 | Conduct in-depth interviews for detailed feedback. | 5h | 2025-09-24 10:00 | 2025-09-24 16:00 | 98 | 0d |  |  | Lam Giang | 5h | 350,000 |
| 100 | 3.3.3 | Summarize and categorize issues by priority. | 5h | 2025-09-24 16:00 | 2025-09-25 12:00 | 99 | 0d |  |  | Lam Giang | 5h | 350,000 |
| 101 | 3.3.4 | Write a satisfaction evaluation report. | 4h | 2025-09-25 13:00 | 2025-09-25 17:00 | 100 | 0d |  |  | Lam Giang | 4h | 280,000 |

| ID | WBS | Task | Duration | Start | Finish | Predecessors | Total slack | Free slack | Constraint | Resources | Work | Cost |
| --- | --- | --- | --- | --- | --- | --- | --- | --- | --- | --- | --- | --- |
| 102 | 3.4 | **Refine Product** | 6d | 2025-09-26 08:00 | 2025-10-04 14:00 |  | 0d |  |  |  | 61h | 5,380,000 |
| 103 | 3.4.1 | Revise tour booking and customer support procedures based on feedback. | 16h | 2025-09-26 08:00 | 2025-09-27 17:00 | 101 | 0d |  | start no earlier than 2025-09-25 08:00 | Felix Phan | 16h | 1,600,000 |
| 104 | 3.4.2 | Optimize itineraries and workflow with partners if needed. | 5h | 2025-09-29 08:00 | 2025-09-29 14:00 | 103 | 0d |  |  | Felix Phan | 5h | 500,000 |
| 105 | 3.4.3 | Conduct training sessions for staff on the updated procedures. | 16h | 2025-09-29 14:00 | 2025-10-01 14:00 | 104 | 0d |  |  | Felix Phan | 16h | 1,600,000 |
| 106 | 3.4.4 | Update internal manuals and response scripts. | 8h | 2025-10-01 14:00 | 2025-10-02 14:00 | 105 | 0d |  |  | Viet Anh | 8h | 560,000 |
| 107 | 3.4.5 | Retest updated procedures. | 8h | 2025-10-02 14:00 | 2025-10-03 14:00 | 106 | 0d |  |  | Viet Anh | 8h | 560,000 |
| 108 | 3.4.6 | Retest with previous pilot group customers. | 8h | 2025-10-03 14:00 | 2025-10-04 14:00 | 107 | 0d |  |  | Viet Anh | 8h | 560,000 |
| 109 | 4 | **Official Launch** | 108.25d | 2025-10-04 14:00 | 2026-03-05 10:00 |  | 0d |  |  |  | 9525h | 630,020,000 |
| 110 | 4.1 | **Execute full-scale Marketing** | 4.62d | 2025-10-04 14:00 | 2025-10-10 14:00 |  | 0d |  |  |  | 80h | 6,320,000 |
| 111 | 4.1.1 | Organize a launch event. | 24h | 2025-10-04 14:00 | 2025-10-08 14:00 | 108 | 143.62d | 0d |  | Phuong Thuy | 24h | 2,400,000 |
| 112 | 4.1.2 | Prepare press release materials. | 8h | 2025-10-04 14:00 | 2025-10-06 14:00 | 108 | 145.62d | 0d |  | Lam Giang | 8h | 560,000 |
| 113 | 4.1.3 | Launch promotional activities across all selected channels. | 24h | 2025-10-04 14:00 | 2025-10-08 14:00 | 102 | 0d |  |  | Minh Hanh | 24h | 1,680,000 |
| 114 | 4.1.4 | Monitor initial customer responses and adjust if necessary. | 8h | 2025-10-08 14:00 | 2025-10-09 14:00 | 113 | 0d |  |  | Van Hieu | 8h | 560,000 |
| 115 | 4.1.5 | Track the effectiveness of each marketing channel and overall performance. | 8h | 2025-10-09 14:00 | 2025-10-10 14:00 | 114 | 0d |  |  | Van Hieu | 8h | 560,000 |
| 116 | 4.1.6 | Organize regular cross-departmental meetings. | 8h | 2025-10-04 14:00 | 2025-10-06 14:00 | 102 | 145.62d | 0d |  | Van Hieu | 8h | 560,000 |
| 117 | 4.2 | **Monitor Performance** | 1.62d | 2025-10-10 14:00 | 2025-10-14 10:00 |  | 0d |  |  |  | 21h | 2,100,000 |
| 118 | 4.2.1 | Collect /weekly performance data | 4h | 2025-10-10 14:00 | 2025-10-11 09:00 | 115 | 0d |  |  | Felix Phan | 4h | 400,000 |
| 119 | 4.2.2 | Compare actual results to targets | 3h | 2025-10-11 09:00 | 2025-10-11 12:00 | 118 | 0d |  |  | Felix Phan | 3h | 300,000 |
| 120 | 4.2.3 | Analyze underperforming areas | 3h | 2025-10-11 13:00 | 2025-10-11 16:00 | 119 | 0d |  |  | Felix Phan | 3h | 300,000 |
| 121 | 4.2.4 | Generate summary reports | 5h | 2025-10-11 16:00 | 2025-10-13 12:00 | 120 | 0d |  |  | Felix Phan | 5h | 500,000 |
| 122 | 4.2.5 | Recommend adjustments based on findings | 6h | 2025-10-13 13:00 | 2025-10-14 10:00 | 121 | 0d |  |  | Felix Phan | 6h | 600,000 |
| 123 | 4.3 | **Re-iterate Risk Management Plan** | 2d | 2025-10-14 10:00 | 2025-10-16 10:00 |  | 0d |  |  |  | 24h | 1,680,000 |
| 124 | 4.3.1 | Reassess potential issues identified during the soft-launch phase. | 8h | 2025-10-14 10:00 | 2025-10-15 10:00 | 122 | 0d |  |  | Tri Tam | 8h | 560,000 |
| 125 | 4.3.2 | Enhance crisis response plans and adjust staff training protocols for emergencies. | 8h | 2025-10-15 10:00 | 2025-10-16 10:00 | 124 | 0d |  |  | Viet Anh | 8h | 560,000 |
| 126 | 4.3.3 | Hold periodic meetings to update and monitor the risk management plan. | 1d | 2025-10-15 10:00 | 2025-10-16 10:00 |  | 0d |  | start no earlier than 2025-10-15 10:00 | Van Hieu | 8h | 560,000 |

| ID | WBS | Task | Duration | Start | Finish | Predecessors | Total slack | Free slack | Resources | Work | Cost |
| --- | --- | --- | --- | --- | --- | --- | --- | --- | --- | --- | --- |
| 127 | 4.4 | **Conduct tours** | 100d | 2025-10-16 10:00 | 2026-03-05 10:00 |  | 0d |  |  | 9400h | 619,920,000 |
| 128 | 4.4.1 | Pre-Tour Preparation | 120d | 2025-10-16 10:00 | 2026-03-05 10:00 | 123 | 17d | 0d | Lo Van Sung [35%]; Giang Dac Thai [35%]; Then Ngoc Tam [30%]; Felix Phan; Lam Giang; Minh Hanh; Phuong Thuy; Tri Tam; Viet Anh; Van Hieu | 7632h | 562,080,000 |
| 129 | 4.4.2 | Deliver the tour itinerary | 120d | 2025-10-16 10:00 | 2026-03-05 10:00 | 123 | 17d | 0d | Ksor Y’Bo Khap [25%]; Then Ngoc Tam [25%]; Giang Dac Thai [25%]; Lo Van Sung [25%] | 920h | 32,400,000 |
| 130 | 4.4.3 | Post-Tour Wrap-Up | 120d | 2025-10-16 10:00 | 2026-03-05 10:00 | 123 | 0d |  | Then Ngoc Tam [40%]; Thao Phuong Anh [30%]; Ksor Y’Bo Khap [30%] | 848h | 25,440,000 |
| 131 | 5 | **Post-launch** | 14d | 2026-03-05 10:00 | 2026-03-25 10:00 |  | 0d |  |  | 156h | 12,000,000 |
| 132 | 5.1 | **Analyze Official Launch Performance** | 3d | 2026-03-05 10:00 | 2026-03-10 10:00 |  | 0d |  |  | 32h | 2,240,000 |
| 133 | 5.1.1 | Collect sales figures, customer feedback, and marketing performance metrics. | 8h | 2026-03-05 10:00 | 2026-03-06 10:00 | 130 | 0d |  | Minh Hanh | 8h | 560,000 |
| 134 | 5.1.2 | Analyze what worked well and identify areas for improvement. | 16h | 2026-03-06 10:00 | 2026-03-09 10:00 | 133 | 0d |  | Minh Hanh | 16h | 1,120,000 |
| 135 | 5.1.3 | Summarize findings in a detailed report for stakeholders. | 8h | 2026-03-09 10:00 | 2026-03-10 10:00 | 134 | 0d |  | Minh Hanh | 8h | 560,000 |
| 136 | 5.2 | **Create Financial Statement** | 2.5d | 2026-03-10 10:00 | 2026-03-12 15:00 |  | 8.5d | 0d |  | 20h | 2,000,000 |
| 137 | 5.2.1 | Collect revenue, expense, and operational cost information. | 8h | 2026-03-10 10:00 | 2026-03-11 10:00 | 135 | 10.5d | 0d | Phuong Thuy | 8h | 800,000 |
| 138 | 5.2.2 | Develop financial statements on a monthly or quarterly basis. | 8h | 2026-03-11 10:00 | 2026-03-12 10:00 | 137 | 10.5d | 0d | Phuong Thuy | 8h | 800,000 |
| 139 | 5.2.3 | Compare actual figures against budget estimates and highlight discrepancies. | 4h | 2026-03-12 10:00 | 2026-03-12 15:00 | 138 | 10.5d | 0d | Phuong Thuy | 4h | 400,000 |
| 140 | 5.3 | **Refine Marketing Plan** | 2.75d | 2026-03-10 10:00 | 2026-03-12 17:00 |  | 0d |  |  | 22h | 1,540,000 |
| 141 | 5.3.1 | Evaluate the performance of each marketing channel based on engagement and conversions. | 6h | 2026-03-10 10:00 | 2026-03-10 17:00 | 132 | 0d |  | Minh Hanh | 6h | 420,000 |
| 142 | 5.3.2 | Use further customer feedback to refine messaging and tactics. | 8h | 2026-03-11 08:00 | 2026-03-11 17:00 | 141 | 0d |  | Minh Hanh | 8h | 560,000 |
| 143 | 5.3.3 | Adjust campaign elements, reallocate budget, and set new objectives. | 8h | 2026-03-12 08:00 | 2026-03-12 17:00 | 142 | 0d |  | Minh Hanh | 8h | 560,000 |
| 144 | 5.4 | **Nurture Customer Relationship** | 2d | 2026-03-13 08:00 | 2026-03-16 17:00 |  | 0d |  |  | 24h | 1,680,000 |
| 145 | 5.4.1 | Create incentive programs to encourage repeat business. | 8h | 2026-03-13 08:00 | 2026-03-13 17:00 | 143 | 0d |  | Lam Giang | 8h | 560,000 |
| 146 | 5.4.2 | Establish a support hotline and maintain active social media engagement. | 8h | 2026-03-14 08:00 | 2026-03-14 17:00 | 145 | 0d |  | Lam Giang | 8h | 560,000 |
| 147 | 5.4.3 | Plan small events to connect with customers and strengthen relationships. | 8h | 2026-03-16 08:00 | 2026-03-16 17:00 | 146 | 0d |  | Lam Giang | 8h | 560,000 |
| 148 | 5.5 | **Set-up Retarget Campaign** | 1.62d | 2026-03-17 08:00 | 2026-03-18 14:00 |  | 0d |  |  | 13h | 910,000 |
| 149 | 5.5.1 | Analyze customer data to segment and identify retargeting groups. | 5h | 2026-03-17 08:00 | 2026-03-17 14:00 | 147 | 0d |  | Minh Hanh | 5h | 350,000 |
| 150 | 5.5.2 | Develop tailored messages aimed at converting hesitant or inactive customers. | 4h | 2026-03-17 14:00 | 2026-03-18 09:00 | 149 | 0d |  | Minh Hanh | 4h | 280,000 |
| 151 | 5.5.3 | Choose the appropriate channels to reach the target audience. | 4h | 2026-03-18 09:00 | 2026-03-18 14:00 | 150 | 0d |  | Minh Hanh | 4h | 280,000 |

| ID | WBS | Task | Duration | Start | Finish | Predecessors | Total slack | Resources | Work | Cost |
| --- | --- | --- | --- | --- | --- | --- | --- | --- | --- | --- |
| 152 | 5.6 | **Execute Retarget Campaign** | 2.62d | 2026-03-18 14:00 | 2026-03-23 10:00 |  | 0d |  | 29h | 2,030,000 |
| 153 | 5.6.1 | Implement the retarget campaign across selected channels. | 16h | 2026-03-18 14:00 | 2026-03-20 14:00 | 151 | 0d | Van Hieu | 16h | 1,120,000 |
| 154 | 5.6.2 | Track engagement and conversion metrics throughout the campaign. | 5h | 2026-03-20 14:00 | 2026-03-21 10:00 | 153 | 0d | Van Hieu | 5h | 350,000 |
| 155 | 5.6.3 | Make real-time improvements based on performance data and feedback. | 8h | 2026-03-21 10:00 | 2026-03-23 10:00 | 154 | 0d | Van Hieu | 8h | 560,000 |
| 156 | 5.7 | **Organize Post-Launch Recap** | 2d | 2026-03-23 10:00 | 2026-03-25 10:00 |  | 0d |  | 16h | 1,600,000 |
| 157 | 5.7.1 | Arrange a debriefing session with key departments. | 4h | 2026-03-23 10:00 | 2026-03-23 15:00 | 152 | 0d | Felix Phan | 4h | 400,000 |
| 158 | 5.7.2 | Discuss successes, challenges, and lessons learned. | 8h | 2026-03-23 15:00 | 2026-03-24 15:00 | 157 | 0d | Felix Phan | 8h | 800,000 |
| 159 | 5.7.3 | Compile and archive a comprehensive recap report for future reference. | 4h | 2026-03-24 15:00 | 2026-03-25 10:00 | 158 | 0d | Felix Phan | 4h | 400,000 |
